# Advanced Tracking A_Start

How a schedule from MS Project changed from version to version. A marks actual dates.

## Version 1 (saved 2025-09-27, file Advanced Tracking A_Start.mpp)

Note of the change: baitap buoi 4

| ID | WBS | Task | Duration | Start | Finish | Predecessors | Total float | Constraint |
| --- | --- | --- | --- | --- | --- | --- | --- | --- |
| 1 | 1 | **Họp nhân viên biên tập** | 60.12d | 2015-04-13 08:00 | 2015-07-06 09:00 |  | 103.75d |  |
| 2 |  | Editorial staff meeting 1 | 1h | 2015-04-13 08:00 | 2015-04-13 09:00 |  | 163.75d | start no earlier than 2015-04-13 08:00 |
| 3 |  | Editorial staff meeting 2 | 1h | 2015-04-20 08:00 | 2015-04-20 09:00 |  | 158.75d | start no earlier than 2015-04-20 08:00 |
| 4 |  | Editorial staff meeting 3 | 1h | 2015-04-27 08:00 | 2015-04-27 09:00 |  | 153.75d | start no earlier than 2015-04-27 08:00 |
| 5 |  | Editorial staff meeting 4 | 1h | 2015-05-04 08:00 | 2015-05-04 09:00 |  | 148.75d | start no earlier than 2015-05-04 08:00 |
| 6 |  | Editorial staff meeting 5 | 1h | 2015-05-11 08:00 | 2015-05-11 09:00 |  | 143.75d | start no earlier than 2015-05-11 08:00 |
| 7 |  | Editorial staff meeting 6 | 1h | 2015-05-18 08:00 | 2015-05-18 09:00 |  | 138.75d | start no earlier than 2015-05-18 08:00 |
| 8 |  | Editorial staff meeting 7 | 1h | 2015-05-25 08:00 | 2015-05-25 09:00 |  | 133.75d | start no earlier than 2015-05-25 08:00 |
| 9 |  | Editorial staff meeting 8 | 1h | 2015-06-01 08:00 | 2015-06-01 09:00 |  | 128.75d | start no earlier than 2015-06-01 08:00 |
| 10 |  | Editorial staff meeting 9 | 1h | 2015-06-08 08:00 | 2015-06-08 09:00 |  | 123.75d | start no earlier than 2015-06-08 08:00 |
| 11 |  | Editorial staff meeting 10 | 1h | 2015-06-15 08:00 | 2015-06-15 09:00 |  | 118.75d | start no earlier than 2015-06-15 08:00 |
| 12 |  | Editorial staff meeting 11 | 1h | 2015-06-22 08:00 | 2015-06-22 09:00 |  | 113.75d | start no earlier than 2015-06-22 08:00 |
| 13 |  | Editorial staff meeting 12 | 1h | 2015-06-29 08:00 | 2015-06-29 09:00 |  | 108.75d | start no earlier than 2015-06-29 08:00 |
| 14 |  | Editorial staff meeting 13 | 1h | 2015-07-06 08:00 | 2015-07-06 09:00 |  | 103.75d | start no earlier than 2015-07-06 08:00 |
| 15 | 2 | **Sự tiếp nhận** | 35.5d | 2015-04-06 08:00 | 2015-05-25 12:00 |  | 0d |  |
| 16 |  | Nhận bản thảo | 0d | 2015-04-06 08:00 | 2015-04-06 08:00 |  | 0d |  |
| 17 |  | Biên tập nội dung | 15d | 2015-04-06 08:00 | 2015-04-30 10:00 | 16 | 0d |  |
| 18 |  | Đánh giá tác phẩm gốc | 10.25d | 2015-04-23 10:00 | 2015-05-07 12:00 | 17FS-5d | 0d |  |
| 19 |  | Đánh giá của tác giả về nội dung biên tập | 12d | 2015-05-07 13:00 | 2015-05-25 12:00 | 17, 18 | 0d |  |
| 20 |  | Bàn giao cho bộ phận biên tập | 0d | 2015-05-25 12:00 | 2015-05-25 12:00 | 19 | 0d |  |
| 21 | 3 | **Biên tập** | 29.12d | 2015-05-25 13:00 | 2015-07-03 14:00 | 15 | 0d |  |
| 22 |  | Sắp xếp bản thảo cho bản sao | 5.12d | 2015-05-25 13:00 | 2015-06-01 14:00 |  | 0d |  |
| 23 |  | Bản sao | 11.25d | 2015-06-01 14:00 | 2015-06-16 16:00 | 22 | 0d |  |
| 24 |  | Đánh giá của tác giả về bản sao | 10d | 2015-06-16 16:00 | 2015-06-30 16:00 | 23 | 0d |  |
| 25 |  | Kết hợp bản sao | 5.12d | 2015-06-26 11:00 | 2015-07-03 14:00 | 24FS-2.5% | 0d |  |
| 26 |  | Bàn giao cho bộ phận sản xuất | 0d | 2015-07-03 14:00 | 2015-07-03 14:00 | 25 | 0d |  |
| 27 | 4 | **Thiết kế và sản xuất** | 58.25d | 2015-07-03 14:00 | 2015-09-23 16:00 | 21 | 0d |  |
| 28 |  | Thiết lập trang | 15d | 2015-07-03 14:00 | 2015-07-24 14:00 |  | 0d |  |
| 29 |  | Interior illustration design | 15.25d | 2015-07-03 14:00 | 2015-07-24 16:00 | 28SS | 0d |  |
| 30 | 4.3 | **1st Pages review** | 30d | 2015-07-24 16:00 | 2015-09-04 16:00 | 29 | 0d |  |
| 31 |  | Proofread and index | 10d | 2015-07-24 16:00 | 2015-08-07 16:00 |  | 0d | start no earlier than 2015-07-17 08:00 |
| 32 |  | Incorporate 1st Pages review | 10d | 2015-08-07 16:00 | 2015-08-21 16:00 | 31 | 0d |  |
| 33 |  | Send proofed pages to Production | 0d | 2015-08-21 16:00 | 2015-08-21 16:00 | 32 | 0d |  |
| 34 |  | Enter page corrections and index | 5d | 2015-08-21 16:00 | 2015-08-28 16:00 | 33 | 0d |  |
| 35 |  | Cover design | 5d | 2015-08-28 16:00 | 2015-09-04 16:00 | 34 | 0d |  |
| 36 | 4.4 | **2nd Pages review** | 13d | 2015-09-04 16:00 | 2015-09-23 16:00 |  | 0d |  |
| 37 |  | Proof and review | 6.5d | 2015-09-04 16:00 | 2015-09-15 11:00 | 35 | 0d |  |
| 38 |  | Send proofed pages to Production | 0d | 2015-09-15 11:00 | 2015-09-15 11:00 | 37 | 0d |  |
| 39 |  | Final review | 5d | 2015-09-16 16:00 | 2015-09-23 16:00 | 38 | 0d |  |
| 40 | 4.5 | **Design book's companion website** | 10d | 2015-09-04 16:00 | 2015-09-18 16:00 | 30 | 3d |  |
| 41 |  | Create mockup | 4.5d | 2015-09-04 16:00 | 2015-09-16 16:00 |  | 3d |  |
| 42 |  | Review with author | 2d | 2015-09-16 16:00 | 2015-09-18 16:00 | 41 | 3d |  |
| 43 | 5 | **Color prep and printing** | 46d | 2015-09-23 16:00 | 2015-11-26 16:00 | 40 | 0d |  |
| 44 |  | Send to color house | 1d | 2015-09-23 16:00 | 2015-09-28 16:00 | 36 | 0d |  |
| 45 |  | Generate proofs | 10d | 2015-09-28 16:00 | 2015-10-12 16:00 | 44 | 0d |  |
| 46 |  | Print and ship | 30d | 2015-10-15 16:00 | 2015-11-26 16:00 | 45FS+3d | 0d |  |
| 47 | 6 | **Book launch prep** | 22d | 2015-09-28 16:00 | 2015-10-28 16:00 |  | 21d |  |
| 48 |  | Launch planning | 5d | 2015-09-28 16:00 | 2015-10-05 16:00 | 44 | 21d |  |
| 49 |  | Assign launch team members | 1d | 2015-10-05 16:00 | 2015-10-06 16:00 | 48 | 21d |  |
| 50 |  | Complete author questionnaire | 5d | 2015-10-06 16:00 | 2015-10-13 16:00 | 49 | 21d |  |
| 51 |  | Schedule author interviews | 1d | 2015-10-13 16:00 | 2015-10-14 16:00 | 50 | 21d |  |
| 52 |  | Design and order marketing material | 10d | 2015-10-14 16:00 | 2015-10-28 16:00 | 51 | 21d |  |

## Version 2 (saved 2025-09-27, file Advanced Tracking B_Start (1).mpp)

Note of the change: Merge branch 'main' of https://github.com/Tranduc2004/1150080131_TranDuc_CNPM2

Last finish stays 2015-11-26. Complete tasks 0 → 4.

Changed:

| ID | Task | Start | Finish | Complete | Total float | Other |
| --- | --- | --- | --- | --- | --- | --- |
| 1 | **Họp nhân viên biên tập** | 2015-04-13 08:00 A |  | 0% → 15% |  |  |
| 2 | Editorial staff meeting 1 | 2015-04-13 08:00 A | 2015-04-13 09:00 A | 0% → 100% | 163.75d → none |  |
| 3 | Editorial staff meeting 2 | 2015-04-20 08:00 A | 2015-04-20 09:00 A | 0% → 100% | 158.75d → none |  |
| 15 | **Sự tiếp nhận** | 2015-04-06 08:00 A |  | 0% → 58% |  |  |
| 16 | Nhận bản thảo | 2015-04-06 08:00 A | 2015-04-06 08:00 A | 0% → 100% | 0d → none |  |
| 17 | Biên tập nội dung | 2015-04-06 08:00 A | 2015-04-30 10:00 A | 0% → 100% | 0d → none | resources Carole Poland → Trần Thanh Điện |
| 18 | Đánh giá tác phẩm gốc | 2015-04-23 10:00 A |  | 0% → 66% |  | resources Hany Morcos; Jane Dow → Huỳnh Phương; Lê Xuân Thy |
| 20 | Handoff to Editorial |  |  |  |  | was named Bàn giao cho bộ phận biên tập |
| 21 | **Editorial** |  |  |  |  | was named Biên tập |
| 22 | Organize manuscript for copyedit |  |  |  |  | was named Sắp xếp bản thảo cho bản sao |
| 23 | Copyedit |  |  |  |  | was named Bản sao |
| 24 | Author review of copyedit |  |  |  |  | was named Đánh giá của tác giả về bản sao |
| 25 | Copyedit incorp |  |  |  |  | was named Kết hợp bản sao |
| 26 | Handoff to Production |  |  |  |  | was named Bàn giao cho bộ phận sản xuất |
| 27 | **Design and Production** |  |  |  |  | was named Thiết kế và sản xuất |
| 28 | Set pages |  |  |  |  | was named Thiết lập trang |

## Version 3 (saved 2025-09-27, file Advanced Tracking C_Start.mpp)

Note of the change: Merge branch 'main' of https://github.com/Tranduc2004/1150080131_TranDuc_CNPM2

Last finish stays 2015-11-26. Complete tasks 4 → 13.

Changed:

| ID | Task | Start | Finish | Duration | Complete | Total float | Other |
| --- | --- | --- | --- | --- | --- | --- | --- |
| 1 | **Họp nhân viên biên tập** |  |  |  | 15% → 54% | 103.75d → 103.88d |  |
| 4 | Editorial staff meeting 3 | 2015-04-27 08:00 A | 2015-04-27 09:00 A |  | 0% → 100% | 153.75d → none |  |
| 5 | Editorial staff meeting 4 | 2015-05-04 08:00 A | 2015-05-04 09:00 A |  | 0% → 100% | 148.75d → none |  |
| 6 | Editorial staff meeting 5 | 2015-05-11 08:00 A | 2015-05-11 09:00 A |  | 0% → 100% | 143.75d → none |  |
| 7 | Editorial staff meeting 6 | 2015-05-18 08:00 A | 2015-05-18 09:00 A |  | 0% → 100% | 138.75d → none |  |
| 8 | Editorial staff meeting 7 | 2015-05-25 08:00 A | 2015-05-25 09:00 A |  | 0% → 100% | 133.75d → none |  |
| 15 | **Sự tiếp nhận** |  | 2015-05-25 12:00 → 2015-05-26 17:00 A (+1d) | 35.5d → 37d | 58% → 100% | 0d → none |  |
| 16 | Manuscript received |  |  |  |  |  | was named Nhận bản thảo |
| 17 | Content edit |  |  |  |  |  | was named Biên tập nội dung; resources Trần Thanh Điện → Carole Poland |
| 18 | Original art review |  | 2015-05-07 12:00 A |  | 66% → 100% | 0d → none | was named Đánh giá tác phẩm gốc; resources Huỳnh Phương; Lê Xuân Thy → Hany Morcos; Jane Dow |
| 19 | Author review of content edit | 2015-05-07 13:00 A | 2015-05-25 12:00 → 2015-05-26 17:00 A (+1d) | 12d → 13.5d | 0% → 100% | 0d → none | was named Đánh giá của tác giả về nội dung biên tập |
| 20 | Handoff to Editorial | 2015-05-25 12:00 → 2015-05-26 17:00 A (+1d) | 2015-05-25 12:00 → 2015-05-26 17:00 A (+1d) |  | 0% → 100% | 0d → none |  |
| 21 | **Biên tập** | 2015-05-25 13:00 → 2015-05-27 08:00 A (+2d) | 2015-07-03 14:00 → 2015-07-08 12:00 (+5d) | 29.12d → 30.5d | 0% → 46% | 0d → -0.75d | was named Editorial |
| 22 | Sắp xếp bản thảo cho bản sao | 2015-05-25 13:00 → 2015-05-27 08:00 A (+2d) | 2015-06-01 14:00 → 2015-06-09 17:00 (+8d) | 5.12d → 10d | 0% → 53% | 0d → 19.75d | was named Organize manuscript for copyedit; resources Hany Morcos; Dan Jump [50%] → Huỳnh Phương Nam; Phan Minh [50%] |
| 23 | Bản sao | 2015-06-01 14:00 → 2015-06-03 10:00 A (+2d) | 2015-06-16 16:00 → 2015-06-19 15:00 A (+3d) | 11.25d → 12d | 0% → 100% | 0d → none | was named Copyedit; resources Copyeditors [200%] → Biên tập viên [200%] |
| 24 | Author review of copyedit | 2015-06-16 16:00 → 2015-06-19 15:00 (+3d) | 2015-06-30 16:00 → 2015-07-03 15:00 (+3d) |  |  | 0d → -0.75d |  |
| 25 | Copyedit incorp | 2015-06-26 11:00 → 2015-07-01 10:00 (+5d) | 2015-07-03 14:00 → 2015-07-08 12:00 (+5d) |  |  | 0d → -0.75d |  |
| 26 | Handoff to Production | 2015-07-03 14:00 → 2015-07-08 12:00 (+5d) | 2015-07-03 14:00 → 2015-07-08 12:00 (+5d) |  |  | 0d → -0.75d |  |
| 27 | **Design and Production** | 2015-07-03 14:00 → 2015-07-08 13:00 (+5d) | 2015-09-23 16:00 → 2015-09-25 17:00 (+2d) | 58.25d → 57.5d |  | 0d → -0.75d |  |
| 28 | Set pages | 2015-07-03 14:00 → 2015-07-08 13:00 (+5d) | 2015-07-24 14:00 → 2015-07-29 12:00 (+5d) |  |  | 0d → -0.75d |  |
| 29 | Interior illustration design | 2015-07-03 14:00 → 2015-07-08 13:00 (+5d) | 2015-07-24 16:00 → 2015-07-29 15:00 (+5d) |  |  | 0d → -0.75d |  |
| 30 | **1st Pages review** | 2015-07-24 16:00 → 2015-07-29 15:00 (+5d) | 2015-09-04 16:00 → 2015-09-09 15:00 (+5d) |  |  | 0d → -0.75d |  |
| 31 | Proofread and index | 2015-07-24 16:00 → 2015-07-29 15:00 (+5d) | 2015-08-07 16:00 → 2015-08-12 15:00 (+5d) |  |  | 0d → -0.75d |  |
| 32 | Incorporate 1st Pages review | 2015-08-07 16:00 → 2015-08-12 15:00 (+5d) | 2015-08-21 16:00 → 2015-08-26 15:00 (+5d) |  |  | 0d → -0.75d |  |
| 33 | Send proofed pages to Production | 2015-08-21 16:00 → 2015-08-26 15:00 (+5d) | 2015-08-21 16:00 → 2015-08-26 15:00 (+5d) |  |  | 0d → -0.75d |  |
| 34 | Enter page corrections and index | 2015-08-21 16:00 → 2015-08-26 15:00 (+5d) | 2015-08-28 16:00 → 2015-09-02 15:00 (+5d) |  |  | 0d → -0.75d |  |
| 35 | Cover design | 2015-08-28 16:00 → 2015-09-02 15:00 (+5d) | 2015-09-04 16:00 → 2015-09-09 15:00 (+5d) |  |  | 0d → -0.75d |  |
| 36 | **2nd Pages review** | 2015-09-04 16:00 → 2015-09-09 15:00 (+5d) | 2015-09-23 16:00 → 2015-09-25 17:00 (+2d) | 13d → 12.25d |  | 0d → -0.75d |  |
| 37 | Proof and review | 2015-09-04 16:00 → 2015-09-09 15:00 (+5d) | 2015-09-15 11:00 → 2015-09-18 10:00 (+3d) |  |  | 0d → -0.75d |  |
| 38 | Send proofed pages to Production | 2015-09-15 11:00 → 2015-09-18 10:00 (+3d) | 2015-09-15 11:00 → 2015-09-18 10:00 (+3d) |  |  | 0d → -0.75d |  |
| 39 | Final review | 2015-09-16 16:00 → 2015-09-21 08:00 (+5d) | 2015-09-23 16:00 → 2015-09-25 17:00 (+2d) |  |  |  |  |
| 40 | **Design book's companion website** | 2015-09-04 16:00 → 2015-09-09 15:00 (+5d) | 2015-09-18 16:00 → 2015-09-23 15:00 (+5d) |  |  | 3d → 2.25d |  |
| 41 | Create mockup | 2015-09-04 16:00 → 2015-09-09 15:00 (+5d) | 2015-09-16 16:00 → 2015-09-21 15:00 (+5d) |  |  | 3d → 2.25d |  |
| 42 | Review with author | 2015-09-16 16:00 → 2015-09-21 15:00 (+5d) | 2015-09-18 16:00 → 2015-09-23 15:00 (+5d) |  |  | 3d → 2.25d |  |
| 43 | **Color prep and printing** | 2015-09-23 16:00 → 2015-09-28 08:00 (+5d) | 2015-11-26 16:00 → 2015-11-26 17:00 | 46d → 44d |  |  |  |
| 44 | Send to color house | 2015-09-23 16:00 → 2015-09-28 08:00 (+5d) | 2015-09-28 16:00 → 2015-09-28 17:00 |  |  |  |  |
| 45 | Generate proofs | 2015-09-28 16:00 → 2015-09-29 08:00 (+1d) | 2015-10-12 16:00 → 2015-10-12 17:00 |  |  |  |  |
| 46 | Print and ship | 2015-10-15 16:00 → 2015-10-16 08:00 (+1d) | 2015-11-26 16:00 → 2015-11-26 17:00 |  |  |  |  |
| 47 | **Book launch prep** | 2015-09-28 16:00 → 2015-09-29 08:00 (+1d) | 2015-10-28 16:00 → 2015-10-28 17:00 |  |  |  |  |
| 48 | Launch planning | 2015-09-28 16:00 → 2015-09-29 08:00 (+1d) | 2015-10-05 16:00 → 2015-10-05 17:00 |  |  |  |  |
| 49 | Assign launch team members | 2015-10-05 16:00 → 2015-10-06 08:00 (+1d) | 2015-10-06 16:00 → 2015-10-06 17:00 |  |  |  |  |
| 50 | Complete author questionnaire | 2015-10-06 16:00 → 2015-10-07 08:00 (+1d) | 2015-10-13 16:00 → 2015-10-13 17:00 |  |  |  |  |
| 51 | Schedule author interviews | 2015-10-13 16:00 → 2015-10-14 08:00 (+1d) | 2015-10-14 16:00 → 2015-10-14 17:00 |  |  |  |  |
| 52 | Design and order marketing material | 2015-10-14 16:00 → 2015-10-15 08:00 (+1d) | 2015-10-28 16:00 → 2015-10-28 17:00 |  |  |  |  |
